# Proyecto Sala Capacitacion

Schedule from MS Project, 2008-06-30 to 2008-09-10, costs in Bs, A marks actual dates.

## Calendars

- Estándar: Mon-Fri 09:00-13:00, 15:00-19:00; Sat-Sun off.

## Resources

| Resource | Rate |
| --- | --- |
| MO Mobiliario T | 0.63 |
| MO Instalación de Equipos T | 3.33 |
| MO Config. De Conex. A red T | 2 |
| MO Actualizacion de software T | 5 |
| MO Instal. de Deep Freeze T | 10 |
| MO Mobiliario S | 0.94 |
| MO Instalación de Equipos S | 5 |
| MO Config. De Conex. A red S | 3 |
| MO Actualizacion de software S | 7.5 |
| MO Instal. de Deep Freeze S | 15 |
| Proyectista | 9.38 |
| Computador Pent D Core 1.8 Ghz | 1199 |
| Cámara Web Conf Genius Look 110 | 42 |
| Monitor LCD 17 Dell E178WFP | 799 |
| Proyector Epson Powerlite S5 | 2757 |
| Pantalla Colgante 1.50 P Proje | 490 |
| Regleta Protec Belkin | 29 |
| Regulador Tecam 1000va Ttr1000 | 42 |
| Silla Para Visitante | 135 |
| Mesa Para Computador | 170 |
| Escritorio | 200 |
| Antivirus Panda 2008 Oem | 56 |
| Windows Vista | 409 |
| Office Basic | 377 |
| Deep Freeze Enterprise (10) | 2000 |

## Schedule

| ID | WBS | Task | Type | Duration | Start | Finish | Predecessors | Complete | Baseline start | Baseline finish | Baseline duration | Constraint | Resources | Work | Actual work | Cost | Baseline cost | Actual cost |
| --- | --- | --- | --- | --- | --- | --- | --- | --- | --- | --- | --- | --- | --- | --- | --- | --- | --- | --- |
| 1 | 1 | **Sala de Capacitación Informática** |  | 52.5d? | 2008-06-30 A | 2008-09-10 A |  | 100% | 2008-06-30 | 2008-08-27 | 43d? |  | Proyectista | 836h | 836h | 40,174.51 | 39,462.01 | 40,174.51 |
| 2 | 1.1 | Asignación proyecto | milestone | 1d? | 2008-06-30 A | 2008-06-30 A |  | 100% | 2008-06-30 | 2008-06-30 | 1d? |  |  |  |  |  |  |  |
| 3 | 1.2 | Dinero para la Adquisición De Equipos | milestone | 0d | 2008-06-30 A | 2008-06-30 A |  | 100% | 2008-06-30 | 2008-06-30 | 0d |  |  |  |  |  |  |  |
| 4 | 1.3 | **Adquisición de Recursos** |  | 25d | 2008-06-30 A | 2008-08-01 A |  | 100% | 2008-06-30 | 2008-08-01 | 25d |  |  |  |  | 34,237 | 34,237 | 34,237 |
| 5 | 1.3.1 | Compra de Recursos |  | 15d | 2008-06-30 A | 2008-07-18 A | 3 | 100% | 2008-06-30 | 2008-07-18 | 15d |  | Computador Pent D Core 1.8 Ghz [1200%]; Cámara Web Conf Genius Look 110 [1200%]; Monitor LCD 17 Dell E178WFP [1200%]; Proyector Epson Powerlite S5; Pantalla Colgante 1.50 P Proje; Regleta Protec Belkin; Regulador Tecam 1000va Ttr1000 [200%]; Silla Para Visitante [1100%]; Mesa Para Computador [1100%]; Escritorio; Antivirus Panda 2008 Oem; Windows Vista; Office Basic; Deep Freeze Enterprise (10) |  |  | 34,237 | 34,237 | 34,237 |
| 6 | 1.3.2 | Entrega de Equipos por proveedores |  | 10d | 2008-07-21 A | 2008-08-01 A | 7, 5 | 100% | 2008-07-21 | 2008-08-01 | 10d |  |  |  |  |  |  |  |
| 7 | 1.4 | **Acondicionamiento de la Sala** |  | 15d | 2008-06-30 A | 2008-07-18 A |  | 100% | 2008-06-30 | 2008-07-18 | 15d |  |  |  |  |  |  |  |
| 8 | 1.4.1 | Instalaciones Eléctricas |  | 5d | 2008-06-30 A | 2008-07-04 A |  | 100% | 2008-06-30 | 2008-07-04 | 5d |  |  |  |  |  |  |  |
| 9 | 1.4.2 | Instalaciones de Red |  | 5d | 2008-07-07 A | 2008-07-11 A | 8 | 100% | 2008-07-07 | 2008-07-11 | 5d |  |  |  |  |  |  |  |
| 10 | 1.4.3 | Instalación de Aire Acondicionado |  | 3d | 2008-07-07 A | 2008-07-09 A | 8 | 100% | 2008-07-07 | 2008-07-09 | 3d |  |  |  |  |  |  |  |
| 11 | 1.4.4 | Instalación de Iluminación |  | 5d | 2008-07-07 A | 2008-07-11 A | 8 | 100% | 2008-07-07 | 2008-07-11 | 5d |  |  |  |  |  |  |  |
| 12 | 1.4.5 | Trabajos de acabado y pintura |  | 3d | 2008-07-14 A | 2008-07-16 A | 8, 9, 10, 11 | 100% | 2008-07-14 | 2008-07-16 | 3d |  |  |  |  |  |  |  |
| 13 | 1.4.6 | Supervision y pruebas de Acondicionamiento e infraestructura sala |  | 1d | 2008-07-18 A | 2008-07-18 A |  | 100% | 2008-07-18 | 2008-07-18 | 1d | start no earlier than 2008-07-18 |  |  |  |  |  |  |
| 14 | 1.5 | **Colocación de Mobiliario** |  | 8d | 2008-07-21 A | 2008-07-30 A |  | 100% | 2008-07-21 | 2008-07-30 | 8d |  | MO Mobiliario T; MO Mobiliario S | 128h | 128h | 100 | 100 | 100 |
| 15 | 1.5.1 | Mesas |  | 4d | 2008-07-21 A | 2008-07-24 A | 7 | 100% | 2008-07-21 | 2008-07-24 | 4d |  |  |  |  |  |  |  |
| 16 | 1.5.2 | Sillas |  | 4d | 2008-07-25 A | 2008-07-30 A | 7, 15 | 100% | 2008-07-25 | 2008-07-30 | 4d |  |  |  |  |  |  |  |
| 17 | 1.5.3 | Escritorio |  | 2d | 2008-07-21 A | 2008-07-22 A | 7 | 100% | 2008-07-21 | 2008-07-22 | 2d |  |  |  |  |  |  |  |
| 18 | 1.6 | **Instalación Y Configuración De Equipos** |  | 25.5d | 2008-08-06 A | 2008-09-10 A | 6 | 100% | 2008-08-04 | 2008-08-27 | 18d |  |  | 288h | 288h | 1,900.01 | 1,900.01 | 1,900.01 |
| 19 | 1.6.1 | Instalación de equipos (PCs y Video) |  | 3d | 2008-08-06 A | 2008-08-20 A | 14 | 100% | 2008-08-04 | 2008-08-06 | 3d | start no earlier than 2008-08-06 | MO Instalación de Equipos T; MO Instalación de Equipos S | 48h | 48h | 200.01 | 200.01 | 200.01 |
| 20 | 1.6.2 | Configuración de Conexión a Red |  | 5d | 2008-08-20 A | 2008-08-27 A | 19, 9 | 100% | 2008-08-07 | 2008-08-13 | 5d | start no earlier than 2008-08-19 | MO Config. De Conex. A red T; MO Config. De Conex. A red S | 80h | 80h | 200 | 200 | 200 |
| 21 | 1.6.3 | Actualización de Software |  | 5d | 2008-08-27 A | 2008-09-03 A | 20 | 100% | 2008-08-14 | 2008-08-20 | 5d | start no earlier than 2008-08-19 | MO Actualizacion de software T; MO Actualizacion de software S | 80h | 80h | 500 | 500 | 500 |
| 22 | 1.6.4 | Instalación de Deep Freeze |  | 5d | 2008-09-03 A | 2008-09-10 A | 21 | 100% | 2008-08-21 | 2008-08-27 | 5d |  | MO Instal. de Deep Freeze T; MO Instal. de Deep Freeze S | 80h | 80h | 1,000 | 1,000 | 1,000 |
| 23 | 1.6.5 | Supervisión y pruebas de Instalación y Configuración de Equipos |  | 1d | 2008-08-28 A | 2008-08-28 A |  | 100% | 2008-08-26 | 2008-08-26 | 1d | start no earlier than 2008-08-28 |  |  |  |  |  |  |
| 24 | 1.7 | **Pago Personal** |  | 28d | 2008-07-18 A | 2008-08-27 A |  | 100% | 2008-07-18 | 2008-08-27 | 28d |  |  |  |  |  |  |  |
| 25 | 1.7.1 | Pago Semana 3 (ver Flujos Monetarios) | milestone | 0d | 2008-07-18 A | 2008-07-18 A |  | 100% | 2008-07-18 | 2008-07-18 | 0d | start no earlier than 2008-07-18 |  |  |  |  |  |  |
| 26 | 1.7.2 | Pago Semana 4 (ver Flujos Monetarios) | milestone | 0d | 2008-07-25 A | 2008-07-25 A |  | 100% | 2008-07-25 | 2008-07-25 | 0d | start no earlier than 2008-07-25 |  |  |  |  |  |  |
| 27 | 1.7.3 | Pago Semana 5 (ver Flujos Monetarios) | milestone | 0d | 2008-08-19 A | 2008-08-19 A |  | 100% | 2008-08-01 | 2008-08-01 | 0d | start no earlier than 2008-08-19 |  |  |  |  |  |  |
| 28 | 1.7.4 | Pago Semana 6 (ver Flujos Monetarios) | milestone | 0d | 2008-08-08 A | 2008-08-08 A |  | 100% | 2008-08-08 | 2008-08-08 | 0d | start no earlier than 2008-08-08 |  |  |  |  |  |  |
| 29 | 1.7.5 | Pago Semana 7 (ver Flujos Monetarios) | milestone | 0d | 2008-08-19 A | 2008-08-19 A |  | 100% | 2008-08-15 | 2008-08-15 | 0d | start no earlier than 2008-08-19 |  |  |  |  |  |  |
| 30 | 1.7.6 | Pago Semana 8 (ver Flujos Monetarios) | milestone | 0d | 2008-08-22 A | 2008-08-22 A |  | 100% | 2008-08-22 | 2008-08-22 | 0d | start no earlier than 2008-08-22 |  |  |  |  |  |  |
| 31 | 1.7.7 | Pago Semana 9 (ver Flujos Monetarios) | milestone | 0d | 2008-08-27 A | 2008-08-27 A |  | 100% | 2008-08-27 | 2008-08-27 | 0d | start no earlier than 2008-08-27 |  |  |  |  |  |  |

| ID | WBS | Task | Type | Duration | Start | Finish | Predecessors | Complete | Baseline start | Baseline finish | Baseline duration | Constraint |
| --- | --- | --- | --- | --- | --- | --- | --- | --- | --- | --- | --- | --- |
| 32 | 1.8 | **Reuniones** |  | 43.5d | 2008-07-11 A | 2008-09-10 A |  | 100% | 2008-07-11 | 2008-08-27 | 34d |  |
| 33 | 1.8.1 | Reunión 1: Acondicionamiento Sala | milestone | 0d | 2008-07-11 A | 2008-07-11 A |  | 100% | 2008-07-11 | 2008-07-11 | 0d | start no earlier than 2008-07-11 |
| 34 | 1.8.2 | Reunión 2: Otros Acond Sala y Muebles | milestone | 0d | 2008-07-25 A | 2008-07-25 A |  | 100% | 2008-07-25 | 2008-07-25 | 0d | start no earlier than 2008-07-25 |
| 35 | 1.8.3 | Reunión 3: Instalación equipos | milestone | 0d | 2008-08-08 A | 2008-08-08 A |  | 100% | 2008-08-08 | 2008-08-08 | 0d | start no earlier than 2008-08-08 |
| 36 | 1.8.4 | Reunión 4: Otros Instal. Equipos | milestone | 0d | 2008-08-22 A | 2008-08-22 A |  | 100% | 2008-08-22 | 2008-08-22 | 0d | finish no earlier than 2008-08-22 |
| 37 | 1.8.5 | Reunión de Cierre e informe final | milestone | 0d | 2008-09-10 A | 2008-09-10 A | 18 | 100% | 2008-08-27 | 2008-08-27 | 0d | finish no earlier than 2008-08-27 |
