# PRoyecto Sala de Capacitación Informatica

Schedule from MS Project, 2008-07-04 to 2008-10-01, costs in Bs, A marks actual dates.

## Calendars

- Estándar: Mon-Fri 08:00-12:00, 14:00-18:00; Sat-Sun off. Exceptions (off unless hours are given): 2008-07-24.

## Resources

| Resource | Group | Rate | Cost per use |
| --- | --- | --- | --- |
| Flete de traslado | Flete | 35 | 70 |
| Personal técnico | MO | 10 |  |
| Personal obrero | MO | 5 |  |
| Personal especializado | MO | 15 |  |
| Presupuesto de materiales | MA | 16537.1 |  |
| Jefe de proyecto | MO | 15 |  |
| Supervisor de obra |  |  |  |

## Schedule

| ID | WBS | Task | Type | Duration | Start | Finish | Complete | Remaining | Baseline start | Baseline finish | Baseline duration | Total slack | Free slack | Constraint | Deadline | Resources |
| --- | --- | --- | --- | --- | --- | --- | --- | --- | --- | --- | --- | --- | --- | --- | --- | --- |
| 1 | 1 | **Acondicionamiento de la sala** |  | 30d | 2008-07-04 A | 2008-08-18 |  | 30d | 2008-06-30 | 2008-08-18 | 34d? | -1d | 0d |  |  |  |
| 2 | 1.1 | Inicio de jornada laboral | milestone | 0d | 2008-07-04 | 2008-07-04 |  |  | 2008-06-30 | 2008-08-15 | 33.88d? | -13.12d | 0d | start no earlier than 2008-07-04 |  |  |
| 3 | 1.2 | **Pago de personal especializado** |  | 29d | 2008-07-04 A | 2008-08-15 A | 100% |  | 2008-07-04 | 2008-08-15 | 29d |  |  |  |  |  |
| 4 | 1.2.1 | Pago de personal especializado 1 | milestone | 0d | 2008-07-04 A | 2008-07-04 A | 100% |  | 2008-07-04 | 2008-07-04 | 0d |  |  | start no earlier than 2008-07-04 |  | Personal especializado |
| 5 | 1.2.2 | Pago de personal especializado 2 | milestone | 0d | 2008-07-18 A | 2008-07-18 A | 100% |  | 2008-07-18 | 2008-07-18 | 0d |  |  | start no earlier than 2008-07-18 |  | Personal especializado |
| 6 | 1.2.3 | Pago de personal especializado 3 | milestone | 0d | 2008-08-01 A | 2008-08-01 A | 100% |  | 2008-08-01 | 2008-08-01 | 0d |  |  | start no earlier than 2008-08-01 |  | Personal especializado |
| 7 | 1.2.4 | Pago de personal especializado 4 | milestone | 0d | 2008-08-15 A | 2008-08-15 A | 100% |  | 2008-08-15 | 2008-08-15 | 0d |  |  | start no earlier than 2008-08-15 |  | Personal especializado |
| 8 | 1.3 | **Pago de personal obrero** |  | 28.12d | 2008-07-04 | 2008-08-15 |  |  | 2008-07-04 | 2008-08-15 | 29d | -28.12d | 0d |  |  |  |
| 9 | 1.3.1 | Pago de personal obrero 1 | milestone | 0d | 2008-07-04 | 2008-07-04 |  |  | 2008-07-04 | 2008-07-04 | 0d | 0d |  | must finish on 2008-07-04 |  |  |
| 10 | 1.3.2 | Pago de personal obrero 2 | milestone | 0d | 2008-07-11 | 2008-07-11 |  |  | 2008-07-11 | 2008-07-11 | 0d | -18.12d | 0d | start no earlier than 2008-07-11 | 2008-07-18 |  |
| 11 | 1.3.3 | Pago de personal obrero 3 | milestone | 0d | 2008-07-18 | 2008-07-18 |  |  | 2008-07-18 | 2008-07-18 | 0d | -23.12d | 0d | start no earlier than 2008-07-18 |  |  |
| 12 | 1.3.4 | Pago de personal obrero 4 | milestone | 0d | 2008-07-25 | 2008-07-25 |  |  | 2008-07-25 | 2008-07-25 | 0d | -27.12d | 0d | start no earlier than 2008-07-25 |  |  |
| 13 | 1.3.5 | Pago de personal obrero 5 | milestone | 0d | 2008-08-01 | 2008-08-01 |  |  | 2008-08-01 | 2008-08-01 | 0d | -32.12d | 0d | start no earlier than 2008-08-01 |  |  |
| 14 | 1.3.6 | Pago de personal obrero 6 | milestone | 0d | 2008-08-08 | 2008-08-08 |  |  | 2008-08-08 | 2008-08-08 | 0d | -37.12d | 0d | start no earlier than 2008-08-08 |  |  |
| 15 | 1.3.7 | Pago de personal obrero 7 | milestone | 0d | 2008-08-15 | 2008-08-15 |  |  | 2008-08-15 | 2008-08-15 | 0d | -42.12d | 0d | start no earlier than 2008-08-15 |  |  |
| 16 | 1.4 | **Supervisión de avance de obra** |  | 29d | 2008-07-04 | 2008-08-15 |  |  | 2008-07-04 | 2008-08-15 | 29d | -42.12d | 0d |  |  |  |
| 17 | 1.4.1 | Supervisión de avance de obra 1 | milestone | 0d | 2008-07-04 | 2008-07-04 |  |  | 2008-07-04 | 2008-07-04 | 0d | -13.12d | 0d | start no earlier than 2008-07-04 |  |  |
| 18 | 1.4.2 | Supervisión de avance de obra 2 | milestone | 0d | 2008-07-11 | 2008-07-11 |  |  | 2008-07-11 | 2008-07-11 | 0d | -18.12d | 0d | start no earlier than 2008-07-11 |  |  |
| 19 | 1.4.3 | Supervisión de avance de obra 3 | milestone | 0d | 2008-07-18 | 2008-07-18 |  |  | 2008-07-18 | 2008-07-18 | 0d | -23.12d | 0d | start no earlier than 2008-07-18 |  |  |
| 20 | 1.4.4 | Supervisión de avance de obra 4 | milestone | 0d | 2008-07-25 | 2008-07-25 |  |  | 2008-07-25 | 2008-07-25 | 0d | -27.12d | 0d | start no earlier than 2008-07-25 |  |  |
| 21 | 1.4.5 | Supervisión de avance de obra 5 | milestone | 0d | 2008-08-01 | 2008-08-01 |  |  | 2008-08-01 | 2008-08-01 | 0d | -32.12d | 0d | start no earlier than 2008-08-01 |  |  |
| 22 | 1.4.6 | Supervisión de avance de obra 6 | milestone | 0d | 2008-08-08 | 2008-08-08 |  |  | 2008-08-08 | 2008-08-08 | 0d | -37.12d | 0d | start no earlier than 2008-08-08 |  |  |
| 23 | 1.4.7 | Supervisión de avance de obra 7 | milestone | 0d | 2008-08-15 | 2008-08-15 |  |  | 2008-08-15 | 2008-08-15 | 0d | -42.12d | 0d | start no earlier than 2008-08-15 |  |  |
| 24 | 1.5 | **Evaluación de acondicionamiento de sala** |  | 30d | 2008-07-04 | 2008-08-18 |  |  | 2008-07-04 | 2008-08-18 | 30d | -43.12d | 0d |  |  |  |
| 25 | 1.5.1 | Evaluación final de acondicionamiento de sala 1 |  | 1d | 2008-07-04 | 2008-07-07 |  |  | 2008-07-04 | 2008-07-07 | 1d | -14.12d | 0d | start no earlier than 2008-07-04 |  |  |
| 26 | 1.5.2 | Evaluación final de acondicionamiento de sala 2 |  | 1d | 2008-07-18 | 2008-07-21 |  |  | 2008-07-18 | 2008-07-21 | 1d | -24.12d | 0d | start no earlier than 2008-07-18 |  |  |
| 27 | 1.5.3 | Evaluación final de acondicionamiento de sala 3 |  | 1d | 2008-08-01 | 2008-08-04 |  |  | 2008-08-01 | 2008-08-04 | 1d | -33.12d | 0d | start no earlier than 2008-08-01 |  |  |
| 28 | 1.5.4 | Evaluación final de acondicionamiento de sala 4 |  | 1d | 2008-08-15 | 2008-08-18 |  |  | 2008-08-15 | 2008-08-18 | 1d | -43.12d | 0d | start no earlier than 2008-08-15 |  |  |

| ID | WBS | Task | Type | Duration | Start | Finish | Predecessors | Baseline start | Baseline finish | Baseline duration | Total slack | Free slack | Constraint | Deadline | Resources | Work | Cost | Baseline cost |
| --- | --- | --- | --- | --- | --- | --- | --- | --- | --- | --- | --- | --- | --- | --- | --- | --- | --- | --- |
| 29 | 2 | **Compra de los materiales** |  | 4d? | 2008-08-18 | 2008-08-22 | 1 | 2008-08-18 | 2008-08-22 | 4d? | -43.12d | 0d | start no earlier than 2008-06-22 | 2008-06-22 | Personal obrero | 40h | 17,793.75 | 165,881.1 |
| 30 | 2.1 | Compra de1 mesa de 10 puestos |  | 1d? | 2008-08-18 | 2008-08-19 |  | 2008-08-18 | 2008-08-19 | 1d? | -41.12d | 0d |  |  | Flete de traslado; Presupuesto de materiales | 8h | 1,440 | 1,440 |
| 31 | 2.2 | Compra de 1 mesa de computadora del prof. |  | 1d? | 2008-08-19 | 2008-08-20 | 30 | 2008-08-19 | 2008-08-20 | 1d? | -41.12d | 0d |  |  | Presupuesto de materiales |  | 120 | 120 |
| 32 | 2.3 | Compra de las 11 webcam |  | 1d? | 2008-08-18 | 2008-08-19 |  | 2008-08-18 | 2008-08-19 | 1d? | -43.12d | 0d |  |  | Presupuesto de materiales |  | 580.8 | 580.8 |
| 33 | 2.4 | Compra de las 11 sillas |  | 1d? | 2008-08-18 | 2008-08-19 |  | 2008-08-18 | 2008-08-19 | 1d? | -43.12d | 0d |  |  | Presupuesto de materiales |  | 937.2 | 937.2 |
| 34 | 2.5 | Compra de 1 router |  | 1d? | 2008-08-19 | 2008-08-20 | 33 | 2008-08-19 | 2008-08-20 | 1d? | -43.12d | 0d |  |  | Presupuesto de materiales |  | 179.4 | 179.4 |
| 35 | 2.6 | Compra de 4 regletas |  | 1d? | 2008-08-18 | 2008-08-19 |  | 2008-08-19 | 2008-08-20 | 1d? | -40.12d | 0d |  |  | Presupuesto de materiales |  | 96 | 96 |
| 36 | 2.7 | Compra de 1 regulador |  | 1d? | 2008-08-19 | 2008-08-20 | 32 | 2008-08-19 | 2008-08-20 | 1d? | -43.12d | 0d |  |  | Presupuesto de materiales |  | 30 | 30 |
| 37 | 2.8 | Compra de las 11 computadoras |  | 2d | 2008-08-20 | 2008-08-22 | 36 | 2008-08-20 | 2008-08-22 | 2d | -43.12d | 0d |  |  | Presupuesto de materiales |  | 10,560 | 10,560 |
| 38 | 2.9 | Contratación del servicio aba para todos |  | 1d? | 2008-08-20 | 2008-08-21 | 34 | 2008-08-20 | 2008-08-21 | 1d? | -43.12d | 0d |  |  | Presupuesto de materiales |  | 102.35 | 102.35 |
| 39 | 2.10 | Compra de 1 video beam |  | 1d? | 2008-08-21 | 2008-08-22 | 38 | 2008-08-21 | 2008-08-22 | 1d? | -43.12d | 0d |  |  | Presupuesto de materiales |  | 2,388 | 2,388 |
| 40 | 2.11 | Pago de personal | milestone | 0d | 2008-08-22 | 2008-08-22 | 39 | 2008-08-22 | 2008-08-22 | 0d | -43.12d | 0d |  |  | Jefe de proyecto |  | 1,200 |  |
| 41 | 3 | **Instalación de mobiliario** |  | 1d? | 2008-08-25 | 2008-08-26 | 29 | 2008-08-22 | 2008-08-25 | 1d? | -0.12d | 0d | start no earlier than 2008-08-25 | 2008-08-25 |  |  | 192 |  |
| 42 | 3.1 | Instalación de mesa de 10 puestos |  | 1d? | 2008-08-25 | 2008-08-26 | 30 | 2008-08-22 | 2008-08-25 | 1d? | -0.12d | 0d | start no earlier than 2008-08-25 |  |  |  |  |  |
| 43 | 3.2 | Instalación de mesa de computadora de prof. |  | 1d? | 2008-08-25 | 2008-08-26 | 31 | 2008-08-22 | 2008-08-25 | 1d? | -0.12d | 0d |  |  |  |  |  |  |
| 44 | 3.3 | Colocación de sillas |  | 1d? | 2008-08-25 | 2008-08-26 |  | 2008-08-22 | 2008-08-25 | 1d? | -0.12d | 0d |  |  |  |  |  |  |
| 45 | 3.4 | Pago de personal | milestone | 0d | 2008-08-25 | 2008-08-25 |  | 2008-08-22 | 2008-08-22 | 0d | 0.88d |  |  |  | Personal obrero; Jefe de proyecto |  | 192 |  |
| 46 | 4 | **Inspecciones de obra** |  | 23d | 2008-08-26 | 2008-09-26 | 41 | 2008-08-25 | 2008-09-24 | 22d | 2.88d |  |  |  |  | 6h | 270 |  |
| 47 | 4.1 | **Pago de personal** |  | 20d | 2008-08-27 | 2008-09-24 |  |  |  |  | 5d |  |  |  |  | 6h | 270 |  |
| 48 | 4.1.1 | Pago de personal 1 |  | 1h | 2008-08-27 | 2008-08-27 |  |  |  |  | 38.21d |  | start no earlier than 2008-08-27 |  | Jefe de proyecto; Personal especializado; Supervisor de obra | 3h | 54 |  |
| 49 | 4.1.2 | Pago de personal 2 |  | 1h | 2008-09-03 | 2008-09-03 |  |  |  |  | 33.21d |  | start no earlier than 2008-09-03 |  | Jefe de proyecto; Supervisor de obra; Personal especializado | 3h | 54 |  |
| 50 | 4.1.3 | Pago de personal 3 | milestone | 0d | 2008-09-10 | 2008-09-10 |  |  |  |  | 28.33d |  | start no earlier than 2008-09-10 |  |  |  | 54 |  |
| 51 | 4.1.4 | Pago de personal 4 | milestone | 0d | 2008-09-17 | 2008-09-17 |  |  |  |  | 23.33d |  | start no earlier than 2008-09-17 |  |  |  | 54 |  |
| 52 | 4.1.5 | Pago de personal 5 | milestone | 0d | 2008-09-24 | 2008-09-24 |  |  |  |  | 18.33d |  | start no earlier than 2008-09-24 |  |  |  | 54 |  |
| 53 | 4.2 | Pago de personal | milestone | 0d | 2008-08-26 | 2008-08-26 |  |  |  |  | 26d |  |  |  | Jefe de proyecto; Supervisor de obra |  |  |  |

| ID | WBS | Task | Type | Duration | Start | Finish | Predecessors | Baseline start | Baseline finish | Baseline duration | Total slack | Free slack | Constraint | Deadline | Resources | Cost |
| --- | --- | --- | --- | --- | --- | --- | --- | --- | --- | --- | --- | --- | --- | --- | --- | --- |
| 54 | 4.3 | **Pagos de obra al dpto de recursos humanos** |  | 20d | 2008-08-28 | 2008-09-25 |  | 2008-08-25 | 2008-09-17 | 17d | 0.88d |  |  |  |  |  |
| 55 | 4.3.1 | Pagos de obra al dpto de recursos humanos 1 | milestone | 0d | 2008-08-28 | 2008-08-28 |  | 2008-08-25 | 2008-08-25 | 0d | 0.88d |  | start no earlier than 2008-08-28 | 2008-08-28 | Jefe de proyecto |  |
| 56 | 4.3.2 | Pagos de obra al dpto de recursos humanos 2 | milestone | 0d | 2008-09-11 | 2008-09-11 |  | 2008-09-03 | 2008-09-03 | 0d | 14d |  | start no earlier than 2008-09-11 |  | Jefe de proyecto |  |
| 57 | 4.3.3 | Pagos de obra al dpto de recursos humanos 3 | milestone | 0d | 2008-09-25 | 2008-09-25 |  | 2008-09-17 | 2008-09-17 | 0d | 4d |  | start no earlier than 2008-09-25 |  | Jefe de proyecto |  |
| 58 | 4.4 | **Reuniones de seguimiento** |  | 20d | 2008-08-27 | 2008-09-24 |  | 2008-08-27 | 2008-09-24 | 20d | 5d |  |  |  |  |  |
| 59 | 4.4.1 | Reuniones de seguimiento 1 | milestone | 0d | 2008-08-27 | 2008-08-27 |  | 2008-08-27 | 2008-08-27 | 0d | 25d |  | start no earlier than 2008-08-27 |  | Jefe de proyecto; Supervisor de obra |  |
| 60 | 4.4.2 | Reuniones de seguimiento 2 | milestone | 0d | 2008-09-03 | 2008-09-03 |  | 2008-09-03 | 2008-09-03 | 0d | 20d |  | start no earlier than 2008-09-03 |  | Jefe de proyecto; Supervisor de obra |  |
| 61 | 4.4.3 | Reuniones de seguimiento 3 | milestone | 0d | 2008-09-10 | 2008-09-10 |  | 2008-09-10 | 2008-09-10 | 0d | 15d |  | start no earlier than 2008-09-10 |  | Jefe de proyecto; Supervisor de obra |  |
| 62 | 4.4.4 | Reuniones de seguimiento 4 | milestone | 0d | 2008-09-17 | 2008-09-17 |  | 2008-09-17 | 2008-09-17 | 0d | 10d |  | start no earlier than 2008-09-17 |  | Jefe de proyecto; Supervisor de obra |  |
| 63 | 4.4.5 | Reuniones de seguimiento 5 | milestone | 0d | 2008-09-24 | 2008-09-24 |  | 2008-09-24 | 2008-09-24 | 0d | 5d |  | start no earlier than 2008-09-24 |  | Jefe de proyecto; Supervisor de obra |  |
| 64 | 4.5 | **Pago por servicios de inspección** |  | 20d | 2008-08-29 | 2008-09-26 |  |  |  |  | 3d |  |  |  |  |  |
| 65 | 4.5.1 | Pago por servicios de inspección 1 | milestone | 0d | 2008-08-29 | 2008-08-29 |  |  |  |  | 23d |  | start no earlier than 2008-08-29 |  | Jefe de proyecto; Supervisor de obra |  |
| 66 | 4.5.2 | Pago por servicios de inspección 2 | milestone | 0d | 2008-09-05 | 2008-09-05 |  |  |  |  | 18d |  | start no earlier than 2008-09-05 |  | Jefe de proyecto; Supervisor de obra |  |
| 67 | 4.5.3 | Pago por servicios de inspección 3 | milestone | 0d | 2008-09-12 | 2008-09-12 |  |  |  |  | 13d |  | start no earlier than 2008-09-12 |  | Jefe de proyecto; Supervisor de obra |  |
| 68 | 4.5.4 | Pago por servicios de inspección 4 | milestone | 0d | 2008-09-19 | 2008-09-19 |  |  |  |  | 8d |  | start no earlier than 2008-09-19 |  | Jefe de proyecto; Supervisor de obra |  |
| 69 | 4.5.5 | Pago por servicios de inspección 5 | milestone | 0d | 2008-09-26 | 2008-09-26 |  |  |  |  | 3d |  | start no earlier than 2008-09-26 |  | Jefe de proyecto; Supervisor de obra |  |
| 70 | 5 | **Instalación de equipos y materiales eléctricos** |  | 10d? | 2008-08-26 | 2008-09-09 | 41, 46 | 2008-09-24 | 2008-10-01 | 5.88d? | 12d | 4d |  |  |  | 4,416 |
| 71 | 5.1 | Instalación de 4 regletas | milestone | 0d | 2008-08-26 | 2008-08-26 |  | 2008-09-24 | 2008-09-25 | 1d? | 22d |  |  |  |  |  |
| 72 | 5.2 | Instalación de regulador | milestone | 0d | 2008-08-26 | 2008-08-26 |  | 2008-09-24 | 2008-09-25 | 1d? | 22d |  |  |  |  |  |
| 73 | 5.3 | Instalar 11 webcam | milestone | 0d | 2008-08-26 | 2008-08-26 |  | 2008-09-24 | 2008-09-25 | 1d? | 22d |  |  |  |  |  |
| 74 | 5.4 | Instalar 1 video beam y 1 pantalla | milestone | 0d | 2008-08-26 | 2008-08-26 |  | 2008-09-24 | 2008-09-25 | 1d? | 22d |  |  |  |  |  |
| 75 | 5.5 | Instalación de las 11 computadoras |  | 1d? | 2008-08-26 | 2008-08-27 |  | 2008-09-24 | 2008-09-25 | 1d? | 16d | 0d |  |  |  |  |
| 76 | 5.6 | Configuración de las 11 computadoras |  | 5d | 2008-08-27 | 2008-09-03 | 75 | 2008-09-25 | 2008-10-01 | 4.88d? | 16d |  |  |  |  |  |
| 77 | 5.7 | Instalación de router | milestone | 0d | 2008-08-27 | 2008-08-27 |  | 2008-09-24 | 2008-09-25 | 1d? | 21d |  | start no earlier than 2008-08-27 |  |  |  |
| 78 | 5.8 | Configuración de red |  | 1d? | 2008-08-26 | 2008-08-27 |  | 2008-09-24 | 2008-09-25 | 1d? | 21d |  | start no earlier than 2008-06-27 |  |  |  |
| 79 | 5.9 | Instalación de software exigido por la empresa |  | 2d | 2008-08-26 | 2008-08-28 |  | 2008-09-24 | 2008-09-25 | 1.88d? | 20d |  | start no earlier than 2008-06-27 |  |  |  |

| ID | WBS | Task | Type | Duration | Start | Finish | Predecessors | Baseline start | Baseline finish | Baseline duration | Total slack | Free slack | Constraint | Resources | Cost |
| --- | --- | --- | --- | --- | --- | --- | --- | --- | --- | --- | --- | --- | --- | --- | --- |
| 80 | 5.10 | **Pago de personal** |  | 5d | 2008-09-02 | 2008-09-09 |  | 2008-09-24 | 2008-09-24 | 0d | 12d |  |  |  | 4,416 |
| 81 | 5.10.1 | Pago de personal 1 | milestone | 0d | 2008-09-02 | 2008-09-02 |  | 2008-09-24 | 2008-09-24 | 0d | 17d |  | start no earlier than 2008-09-02 | Personal técnico; Personal obrero; Personal especializado; Jefe de proyecto | 2,208 |
| 82 | 5.10.2 | Pago de personal 2 | milestone | 0d | 2008-09-09 | 2008-09-09 |  | 2008-09-24 | 2008-09-24 | 0d | 12d |  | start no earlier than 2008-09-09 | Personal técnico; Personal obrero; Personal especializado; Jefe de proyecto | 2,208 |
| 83 | 6 | **Testeo de configuración de equipos** |  | 4d? | 2008-09-15 | 2008-09-19 | 70 | 2008-09-10 | 2008-09-15 | 3.88d? | 8d |  | start no earlier than 2008-09-15 |  | 3,552 |
| 84 | 6.1 | Pruebas de funcionamiento de hardware |  | 2d | 2008-09-15 | 2008-09-17 |  | 2008-09-10 | 2008-09-11 | 1.88d? | 8d | 0d |  |  |  |
| 85 | 6.2 | Pruebas de funcionamiento de software |  | 1d? | 2008-09-15 | 2008-09-16 |  | 2008-09-11 | 2008-09-12 | 1d? | 11d |  |  |  |  |
| 86 | 6.3 | Pruebas de conexión de red |  | 2d | 2008-09-17 | 2008-09-19 | 84 | 2008-09-12 | 2008-09-15 | 1.88d? | 8d |  |  |  |  |
| 87 | 6.4 | **Pago de personal** |  | 0d | 2008-09-15 | 2008-09-15 |  | 2008-09-15 | 2008-09-15 | 0d | 12d |  |  |  | 3,552 |
| 88 | 6.4.1 | Pago de personal 1 | milestone | 0d | 2008-09-15 | 2008-09-15 |  | 2008-09-15 | 2008-09-15 | 0d | 12d |  | start no earlier than 2008-09-15 |  | 3,552 |
| 89 | 7 | **Adiestramiento de personal de capacitación** |  | 12.88d | 2008-09-10 | 2008-09-26 |  | 2008-09-10 | 2008-09-19 | 7.88d? | 2.12d |  |  |  | 1,440 |
| 90 | 7.1 | Contratación de personal de entrenamiento |  | 3d | 2008-09-10 | 2008-09-15 |  | 2008-09-10 | 2008-09-11 | 1d? | 12d |  | start no earlier than 2008-09-10 |  |  |
| 91 | 7.2 | Entrenamiento de personal |  | 5d | 2008-09-22 | 2008-09-26 |  | 2008-09-15 | 2008-09-19 | 4.88d? | 2.12d |  | finish no earlier than 2008-09-26 |  |  |
| 92 | 7.3 | Pago de personal | milestone | 0d | 2008-09-26 | 2008-09-26 |  | 2008-09-19 | 2008-09-19 | 0d | 3d |  | start no earlier than 2008-09-26 | Personal especializado; Jefe de proyecto | 1,440 |
| 93 | 8 | **Supervisión de obra instalación de sala** |  | 2d? | 2008-09-29 | 2008-10-01 |  | 2008-09-22 | 2008-09-29 | 5d? | 0d |  | start no earlier than 2008-09-29 |  | 2,560 |
| 94 | 8.1 | Inspección de instalaciones |  | 1d? | 2008-09-29 | 2008-09-30 |  | 2008-09-22 | 2008-09-23 | 1d? | 1d |  | start no earlier than 2008-09-22 |  |  |
| 95 | 8.2 | Evaluación de hardware |  | 1d | 2008-09-29 | 2008-09-30 |  | 2008-09-24 | 2008-09-26 | 2.88d? | 1d |  | finish no earlier than 2008-09-26 |  |  |
| 96 | 8.3 | Evaluación de operatibilidad de los equipos |  | 1d? | 2008-09-29 | 2008-09-30 |  | 2008-09-25 | 2008-09-26 | 1d? | 0d |  | start no earlier than 2008-09-25 |  |  |
| 97 | 8.4 | Implementación de pautas hechas por la supervisión |  | 1d? | 2008-09-30 | 2008-10-01 | 96 | 2008-09-26 | 2008-09-29 | 1d? | 0d |  |  |  |  |
| 98 | 8.5 | Pago de personal | milestone | 0d | 2008-10-01 | 2008-10-01 | 97 | 2008-09-29 | 2008-09-29 | 0d | 0d |  |  | Personal especializado; Jefe de proyecto; Supervisor de obra | 2,560 |
| 99 | 8.6 | Finalización del proyecto | milestone | 0d | 2008-10-01 | 2008-10-01 | 98 | 2008-09-29 | 2008-09-29 | 0d | 0d |  |  |  |  |
